# 试点项目

Schedule from a web Gantt chart, 2025-04-01 to 2025-04-30.
Every day is a working day

## Schedule

| ID | WBS | Task | Duration | Start | Finish |
| --- | --- | --- | --- | --- | --- |
| 2 | 1 | **示范变电站 部署实施工作** | 19d | 2025-04-12 | 2025-04-30 |
| 3 | 1.1 | 预警摄像头安装、人脸识别设备安装 | 5d | 2025-04-16 | 2025-04-20 |
| 4 | 1.2 | 网络贯通联调 | 14d | 2025-04-12 | 2025-04-25 |
| 5 | 1.3 | 智巡接入联调 | 10d | 2025-04-21 | 2025-04-30 |
| 6 | 2 | **智巡系统工作** | 20d | 2025-04-01 | 2025-04-20 |
| 7 | 2.1 | 摄像机接入 | 14d | 2025-04-07 | 2025-04-20 |
| 8 | 2.2 | 站端智巡作业监督功能开发 | 14d | 2025-04-07 | 2025-04-20 |
| 9 | 2.3 | 算法开发 | 20d | 2025-04-01 | 2025-04-20 |
| 10 | 2.4 | 交互接口开发 | 18d | 2025-04-03 | 2025-04-20 |
| 11 | 3 | **智巡集控工作** | 18d | 2025-04-03 | 2025-04-20 |
| 12 | 3.1 | 视频接入 | 6d | 2025-04-10 | 2025-04-15 |
| 13 | 3.2 | 交互接口开发 | 18d | 2025-04-03 | 2025-04-20 |
| 14 | 4 | **智巡系统 现场部署调试** | 10d | 2025-04-21 | 2025-04-30 |
| 15 | 4.1 | 系统部署 | 1d | 2025-04-21 | 2025-04-21 |
| 16 | 4.2 | 系统调试 | 10d | 2025-04-21 | 2025-04-30 |
| 17 | 5 | **流媒体中台开发** | 14d | 2025-04-01 | 2025-04-14 |
| 18 | 5.1 | 视频终端接入服务 | 14d | 2025-04-01 | 2025-04-14 |
| 19 | 5.2 | 边缘数据中心抽图服务 | 11d | 2025-04-01 | 2025-04-11 |
| 20 | 5.3 | AI图像识别代理服务 | 6d | 2025-04-01 | 2025-04-06 |
| 21 | 5.4 | 与风控平台的定制化服务开发 | 14d | 2025-04-01 | 2025-04-14 |
| 22 | 5.5 | 与风控平台的集成服务开发 | 9d | 2025-04-01 | 2025-04-09 |
| 23 | 5.6 | 与智巡系统的集成服务开发 | 9d | 2025-04-01 | 2025-04-09 |
| 24 | 6 | **风控平台开发** | 20d | 2025-04-01 | 2025-04-20 |
| 25 | 6.1 | 监控界面 | 11d | 2025-04-10 | 2025-04-20 |
| 26 | 6.2 | 综合展示 | 11d | 2025-04-10 | 2025-04-20 |
| 27 | 6.3 | 预警告警详情 | 6d | 2025-04-10 | 2025-04-15 |
| 28 | 6.4 | 白名单管理 | 6d | 2025-04-10 | 2025-04-15 |
| 29 | 6.5 | 日计划监控画面 | 6d | 2025-04-10 | 2025-04-15 |
| 30 | 6.6 | 与流媒体接入集成开发 | 6d | 2025-04-15 | 2025-04-20 |
| 31 | 6.7 | 无计划判定逻辑服务 | 6d | 2025-04-10 | 2025-04-15 |
| 32 | 6.8 | 基建作业变电站信息排查 | 1d | 2025-04-01 | 2025-04-01 |
